# SD17-V1研发计划

How a schedule from a web Gantt chart changed from version to version. A marks actual dates.

## Version 1 (saved 2025-06-25)

| ID | WBS | Task | Duration | Start | Finish |
| --- | --- | --- | --- | --- | --- |
| 2 | 1 | **结构设计** | 1d | 2025-06-25 | 2025-06-25 |
| 3 |  | ID+结构堆叠 | 1d | 2025-06-25 | 2025-06-25 |
| 4 |  | 结构评审和修改 | 1d | 2025-06-25 | 2025-06-25 |
| 5 |  | 第一阶段结构细化评审 | 1d | 2025-06-25 | 2025-06-25 |
| 6 |  | 供应商预选 | 1d | 2025-06-25 | 2025-06-25 |
| 7 |  | 第二阶段结构细化和评审 | 1d | 2025-06-25 | 2025-06-25 |
| 8 | 2 | **DFM修改和评审** | 1d | 2025-06-25 | 2025-06-25 |
| 9 |  | 供应商输出DFM | 1d | 2025-06-25 | 2025-06-25 |
| 10 |  | DFM评审 | 1d | 2025-06-25 | 2025-06-25 |
| 11 |  | DFM修改确认 | 1d | 2025-06-25 | 2025-06-25 |
| 12 |  | 正式T0投模 | 1d | 2025-06-25 | 2025-06-25 |

## Version 2 (saved 2025-06-25)

Last finish 2025-06-25 → 2025-08-12 (+48d). Complete tasks 0 → 11.

Added:

| ID | Task | Duration | Start | Finish | Predecessors |
| --- | --- | --- | --- | --- | --- |
| 11 | 正式T0投模+修模 | 44d | 2025-05-28 | 2025-07-17 | 10 |
| 12 | 回T1结构模 | 11d | 2025-07-18 | 2025-07-30 | 11 |
| 13 | **硬件设计** | 45d | 2025-05-21 | 2025-07-11 |  |
| 14 | 硬件原理图设计完成 | 7d | 2025-05-21 | 2025-05-28 | 5 |
| 15 | 硬件layout | 7d | 2025-05-29 | 2025-06-05 | 14 |
| 16 | 投PCB板+确认数量并回板 | 7d | 2025-06-06 | 2025-06-13 | 15 |
| 17 | 回PCBA板 | 4d | 2025-06-16 | 2025-06-19 | 16 |
| 18 | 硬件裸板调试 | 5d | 2025-06-25 | 2025-06-30 |  |
| 19 | 硬件单元测试完成 | 9d | 2025-06-26 | 2025-07-05 |  |
| 20 | T0研发装机30（美15+欧澳15） | 4d | 2025-07-08 | 2025-07-11 |  |
| 21 | **软件开发** | 33d | 2025-06-20 | 2025-07-28 |  |
| 22 | 裸板调试版本 | 5d | 2025-06-20 | 2025-06-25 | 17 |
| 23 | 单元测试版本 | 2d | 2025-06-26 | 2025-06-27 | 22 |
| 24 | 工厂版本自测完成并转测 | 13d | 2025-07-01 | 2025-07-15 |  |
| 25 | 工厂版本测试完成 | 3d | 2025-07-16 | 2025-07-18 | 24 |
| 26 | 正式版本自测完成并转测 | 10d | 2025-07-10 | 2025-07-21 |  |
| 27 | 正式版本测试完成 | 6d | 2025-07-22 | 2025-07-28 | 26 |
| 28 | **工厂小批** | 22d | 2025-07-18 | 2025-08-12 |  |
| 29 | 小批备料 | 13d | 2025-07-18 | 2025-08-01 |  |
| 30 | 回PCB,PCBA | 2d | 2025-08-02 | 2025-08-04 | 29 |
| 31 | NPI装机 | 3d | 2025-08-05 | 2025-08-07 | 30 |
| 32 | 硬件单元测试 | 1d | 2025-08-08 | 2025-08-08 | 31 |
| 33 | 图像测试 | 3d | 2025-08-09 | 2025-08-12 | 32 |

Removed: 7 第二阶段结构细化和评审; 12 正式T0投模

Changed:

| ID | Task | Start | Finish | Duration | Complete | Predecessors |
| --- | --- | --- | --- | --- | --- | --- |
| 2 | **结构设计** | 2025-06-25 → 2025-04-15 (-71d) | 2025-06-25 → 2025-07-30 (+35d) | 1d → 92d | 0% → 59% |  |
| 3 | ID+结构堆叠 | 2025-06-25 → 2025-04-15 (-71d) | 2025-06-25 → 2025-05-14 (-42d) | 1d → 26d | 0% → 100% |  |
| 4 | 结构评审和修改 | 2025-06-25 → 2025-05-15 (-41d) | 2025-06-25 → 2025-05-19 (-37d) | 1d → 4d | 0% → 100% | none → 3 |
| 5 | 第一阶段结构细化评审 | 2025-06-25 → 2025-05-20 (-36d) | 2025-06-25 → 2025-05-20 (-36d) |  | 0% → 100% | none → 4 |
| 6 | 供应商预选 | 2025-06-25 → 2025-05-21 (-35d) | 2025-06-25 → 2025-05-21 (-35d) |  | 0% → 100% | none → 5 |
| 7 | **DFM修改和评审** | 2025-06-25 → 2025-05-22 (-34d) | 2025-06-25 → 2025-05-27 (-29d) | 1d → 5d | 0% → 100% | none → 6 |
| 8 | 供应商输出DFM | 2025-06-25 → 2025-05-22 (-34d) | 2025-06-25 → 2025-05-24 (-32d) | 1d → 3d | 0% → 100% |  |
| 9 | DFM评审 | 2025-06-25 → 2025-05-26 (-30d) | 2025-06-25 → 2025-05-26 (-30d) |  | 0% → 100% | none → 8 |
| 10 | DFM修改确认 | 2025-06-25 → 2025-05-27 (-29d) | 2025-06-25 → 2025-05-27 (-29d) |  | 0% → 100% | none → 9 |
